# Proyect1

Schedule from MS Project, 2010-08-09 to 2010-11-18, status date 2010-10-07, 24 hours a day, A marks actual dates.

## Calendars

- PIS-Interpool: Mon-Sun 00:00-24:00.

## Resources

| Resource | Group |
| --- | --- |
| Alejandro García | Verificación |
| Diego Ricca | Analistas |
| Federico Andrade | Esp. Técnico |
| Federico Trinidad | Esp. Técnico |
| Ignacio Infante | Esp. Técnico |
| Javier Madeiro | SQA |
| José Cordero | GUI |
| Juan Ghiringhelli | Administrador |
| Leticia Vilariño | GUI |
| Marcos Sander | Arquitecto |
| Martín Taruselli | Analistas |
| Vicente Acosta | SCM |

## Schedule

| ID | WBS | Task | Duration | Start | Finish | Predecessors | Complete | Constraint | Resources | Work | Actual work | Text1 |
| --- | --- | --- | --- | --- | --- | --- | --- | --- | --- | --- | --- | --- |
| 1 | 1 | **Fase inicial** | 27.42d | 2010-08-09 09:00 A | 2010-09-05 19:00 A |  | 100% |  |  | 307h | 307h | 27,42 días |
| 2 | 1.1 | **Iteración 1** | 13.42d | 2010-08-09 09:00 A | 2010-08-22 19:00 A |  | 100% |  |  | 111h | 111h | 13,42 días |
| 3 | 1.1.1 | Relevar requerimientos | 15h | 2010-08-09 09:00 A | 2010-08-10 00:00 A |  | 100% | start no earlier than 2010-08-09 09:00 | Diego Ricca; Martín Taruselli; José Cordero; Leticia Vilariño | 60h | 60h | 15 horas |
| 4 | 1.1.2 | Pautas GUI | 15h | 2010-08-09 09:00 A | 2010-08-10 00:00 A |  | 100% | start no earlier than 2010-08-09 09:00 | José Cordero; Leticia Vilariño | 30h | 30h | 15 horas |
| 5 | 1.1.3 | Modelo de dominio | 2h | 2010-08-22 17:00 A | 2010-08-22 19:00 A |  | 100% | finish no earlier than 2010-08-22 19:00 | Marcos Sander; Diego Ricca; Martín Taruselli | 6h | 6h | 2 horas |
| 6 | 1.1.4 | Definir arquitectura | 15h | 2010-08-22 04:00 A | 2010-08-22 19:00 A |  | 100% | finish no earlier than 2010-08-22 19:00 | Marcos Sander | 15h | 15h | 15 horas |
| 7 | 1.2 | **Iteración 2** | 14d | 2010-08-22 19:00 A | 2010-09-05 19:00 A |  | 100% |  |  | 196h | 196h | 14 días |
| 8 | 1.2.1 | Diseño prototipo | 10h | 2010-08-29 09:00 A | 2010-08-29 19:00 A | 3, 5, 6 | 100% | finish no earlier than 2010-08-29 19:00 | Vicente Acosta; Federico Trinidad; Federico Andrade; Ignacio Infante | 40h | 40h | 10 horas |
| 9 | 1.2.2 | Descripción del proyecto | 10h | 2010-08-22 19:00 A | 2010-08-23 05:00 A | 3, 4, 5, 6 | 100% |  | Juan Ghiringhelli | 10h | 10h | 10 horas |
| 10 | 1.2.3 | Plan de desarrollo | 10h | 2010-09-05 09:00 A | 2010-09-05 19:00 A | 9 | 100% | finish no earlier than 2010-09-05 19:00 | Marcos Sander; Ignacio Infante | 20h | 20h | 10 horas |
| 11 | 1.2.4 | Prototipo funcional | 16h | 2010-08-30 15:00 A | 2010-08-31 07:00 A | 8 | 100% | start no earlier than 2010-08-30 15:00 | Diego Ricca; Federico Andrade; Federico Trinidad; Ignacio Infante; Martín Taruselli; Vicente Acosta | 96h | 96h | 16 horas |
| 12 | 1.2.5 | Prototipo GUI | 15h | 2010-08-30 15:00 A | 2010-08-31 06:00 A | 4 | 100% | start no earlier than 2010-08-30 15:00 | Leticia Vilariño; José Cordero | 30h | 30h | 15 horas |
| 13 | 2 | **Fase elaboración** | 32.71d? | 2010-08-31 07:00 A | 2010-10-03 00:00 A |  | 100% |  |  | 446h | 446h | 32,71 días? |
| 14 | 2.1 | **Iteración 1** | 6.29d | 2010-08-31 07:00 A | 2010-09-06 14:00 A |  | 100% |  |  | 11h | 11h | 6,29 días |
| 15 | 2.1.1 | Integración del prototipo | 6h | 2010-08-31 07:00 A | 2010-08-31 13:00 A | 8, 11 | 100% |  | Ignacio Infante | 6h | 6h | 6 horas |
| 16 | 2.1.2 | Revisión de atributos de calidad | 5h | 2010-09-06 09:00 A | 2010-09-06 14:00 A | 9 | 100% | start no earlier than 2010-09-06 09:00 | Javier Madeiro | 5h | 5h | 5 horas |
| 17 | 2.2 | **Iteración 2** | 28d? | 2010-09-05 00:00 A | 2010-10-03 00:00 A |  | 100% |  |  | 435h | 435h | 28 días? |
| 18 | 1 | Login a Facebook desde WP7 | 10h | 2010-09-05 00:00 A | 2010-09-05 10:00 A |  | 100% | start no earlier than 2010-09-05 00:00 | Vicente Acosta; Leticia Vilariño | 20h | 20h | 10 horas |
| 19 | 2 | Integrar al proyecto módulo de Facebook | 10h | 2010-09-05 10:00 A | 2010-09-05 20:00 A | 18 | 100% |  | Vicente Acosta; Federico Andrade | 20h | 20h | 10 horas |
| 20 | 3 | Filtrar sospechosos según datos | 10h | 2010-09-20 09:00 A | 2010-09-20 19:00 A |  | 100% |  | Federico Andrade | 10h | 10h | 10 horas |
| 21 | 4 | Armar tabla para datos sospechosos | 2h | 2010-09-20 19:00 A | 2010-09-20 21:00 A | 20 | 100% |  | Federico Andrade; Federico Trinidad | 4h | 4h | 2 horas |
| 22 | 5 | Llenar tablas para pistas ciudad | 1.33d? | 2010-09-20 09:00 A | 2010-09-21 17:00 A |  | 100% |  | Federico Trinidad | 32h | 32h | 1,33 días? |
| 23 | 6 | Parsear noticias de ciudad de Bing | 2d? | 2010-09-24 09:00 A | 2010-09-26 09:00 A | 22 | 100% |  | Federico Trinidad | 48h | 48h | 2 días? |
| 24 | 7 | Servicios de Azure para WP7 para workflow de juego | 1.67d? | 2010-09-20 09:00 A | 2010-09-22 01:00 A |  | 100% |  | Ignacio Infante | 40h | 40h | 1,67 días? |
| 25 | 8 | Armar iteración para usuario | 0.33d? | 2010-09-20 09:00 A | 2010-09-20 17:00 A |  | 100% |  |  |  |  | 0,33 días? |
| 26 | 9 | Modelar estructura de las pistas | 0.5d? | 2010-09-23 09:00 A | 2010-09-23 21:00 A | 25 | 100% |  |  |  |  | 0,5 días? |
| 27 | 10 | Llenar tablas con datos definitivos | 0.33d? | 2010-09-28 17:00 A | 2010-09-29 01:00 A | 26 | 100% |  |  |  |  | 0,33 días? |
| 28 | 11 | Integrar código workflow con Gui y datos | 0.25d? | 2010-09-30 09:00 A | 2010-10-01 17:00 A | 18, 25, 27 | 100% | start no earlier than 2010-09-30 09:00 |  |  |  | 0,25 días? |
| 29 | 12 | Validar arquitectura | 1d? | 2010-09-20 09:00 A | 2010-09-21 09:00 A |  | 100% |  | Marcos Sander | 24h | 24h | 1 día? |
| 30 | 13 | Reuniones para completar base de datos | 1.67d? | 2010-09-23 09:00 A | 2010-09-25 01:00 A | 29 | 100% | start no earlier than 2010-09-23 09:00 | Marcos Sander | 40h | 40h | 1,67 días? |
| 31 | 14 | Diseño iteración | 0.67d? | 2010-09-30 09:00 A | 2010-10-01 01:00 A | 30 | 100% | start no earlier than 2010-09-30 09:00 | Marcos Sander | 16h | 16h | 0,67 días? |
| 32 | 15 | Planificar verificación de iteración | 0.25d? | 2010-09-20 09:00 A | 2010-09-20 15:00 A |  | 100% |  |  |  |  | 0,25 días? |
| 33 | 16 | Armar casos de prueba generales | 0.67d? | 2010-09-21 09:00 A | 2010-09-22 01:00 A | 32 | 100% | start no earlier than 2010-09-21 09:00 |  |  |  | 0,67 días? |
| 34 | 17 | Diseñar casos de prueba generales | 0.58d? | 2010-09-28 09:00 A | 2010-09-28 23:00 A | 33 | 100% | start no earlier than 2010-09-28 09:00 |  |  |  | 0,58 días? |
| 35 | 18 | RTF Modelo CU | 0.67d? | 2010-09-20 09:00 A | 2010-09-21 01:00 A |  | 100% |  | Javier Madeiro | 16h | 16h | 0,67 días? |
| 36 | 19 | RTF Arquitectura | 0.67d? | 2010-09-22 09:00 A | 2010-09-23 01:00 A | 35 | 100% | start no earlier than 2010-09-22 09:00 | Javier Madeiro; Marcos Sander | 32h | 32h | 0,67 días? |
| 37 | 20 | RTF Proyecto | 0.17d? | 2010-09-24 09:00 A | 2010-09-24 13:00 A | 36 | 100% | start no earlier than 2010-09-24 09:00 | Javier Madeiro; Juan Ghiringhelli | 8h | 8h | 0,17 días? |
| 38 | 21 | RTF Desarrollo | 0.67d? | 2010-09-27 09:00 A | 2010-09-28 01:00 A | 37 | 100% | start no earlier than 2010-09-27 09:00 | Javier Madeiro | 16h | 16h | 0,67 días? |
| 39 | 22 | RTF SCM | 0.67d? | 2010-09-29 09:00 A | 2010-09-30 01:00 A | 38 | 100% | start no earlier than 2010-09-29 09:00 | Javier Madeiro | 16h | 16h | 0,67 días? |
| 40 | 23 | RTF estimaciones | 0.33d? | 2010-10-01 09:00 A | 2010-10-01 17:00 A | 39 | 100% | start no earlier than 2010-10-01 09:00 | Javier Madeiro | 8h | 8h | 0,33 días? |
| 41 | 24 | Animaciones Silverlight | 3.33d? | 2010-09-20 09:00 A | 2010-09-23 17:00 A |  | 100% |  | José Cordero | 80h | 80h | 3,33 días? |
| 42 | 25 | Verificar código FE-IT2 | 1.58d | 2010-09-20 09:00 A | 2010-09-21 23:00 A |  | 100% |  |  |  |  | 1,58 días |
| 43 | 26 | Buffer de error | 3h | 2010-10-02 21:00 A | 2010-10-03 00:00 A |  | 100% | finish no earlier than 2010-10-03 00:00 |  |  |  | 3 horas |
| 44 | 27 | Integración | 5h | 2010-10-01 09:00 A | 2010-10-01 14:00 A |  | 100% | start no earlier than 2010-10-01 09:00 | Ignacio Infante | 5h | 5h | 5 horas |

| ID | WBS | Task | Type | Duration | Start | Finish | Predecessors | Complete | Remaining | Total slack | Free slack | Constraint | Resources | Work | Actual work | Text1 |
| --- | --- | --- | --- | --- | --- | --- | --- | --- | --- | --- | --- | --- | --- | --- | --- | --- |
| 45 | 3 | **Fase construcción** |  | 35.17d? | 2010-10-03 00:00 A | 2010-11-07 04:00 |  | 45% | 19.47d? | 7.92d | 0d |  |  | 3999.5h | 1815h | 35,17 días? |
| 46 | 3.1 | **Iteración 1** |  | 14.5d? | 2010-10-03 00:00 A | 2010-10-17 12:00 |  | 80% | 2.84d? | 14.87d | 0d |  |  | 906.5h | 669h | 14,17 días? |
| 47 | 3.1.1 | **Semana 09** |  | 7.04d? | 2010-10-03 00:00 A | 2010-10-10 01:00 A |  | 100% |  |  |  |  |  | 181.5h | 181.5h |  |
| 48 | 3.1.1.1 | **Diseño / Implementación** |  | 5.62d | 2010-10-04 09:00 A | 2010-10-10 00:00 A |  | 100% |  |  |  |  |  | 47h | 47h |  |
| 49 | 3.1.1.1.1 | Fin pantallas principales |  | 10h | 2010-10-04 09:00 A | 2010-10-04 19:00 A |  | 100% |  |  |  | start no earlier than 2010-10-04 09:00 | Leticia Vilariño | 10h | 10h | 10 horas |
| 50 | 3.1.1.1.2 | Actualización diseño según lo implementado |  | 12h | 2010-10-04 09:00 A | 2010-10-04 21:00 A |  | 100% |  |  |  | start no earlier than 2010-10-04 09:00 | Marcos Sander | 12h | 12h | 12 horas |
| 51 | 3.1.1.1.3 | Actualización verificación unitaria versión beta |  | 4.17h | 2010-10-04 09:00 A | 2010-10-04 13:10 A |  | 100% |  |  |  | start no earlier than 2010-10-04 09:00 | Diego Ricca; Federico Andrade; Federico Trinidad; Ignacio Infante; Martín Taruselli; Vicente Acosta | 25h | 25h | 4,17 horas |
| 52 | 3.1.1.1.4 | Liberación versión beta 1.0 | milestone | 0h | 2010-10-10 00:00 A | 2010-10-10 00:00 A | 51, 54 | 100% |  |  |  | start no earlier than 2010-10-10 00:00 |  |  |  | 0 horas |
| 53 | 3.1.1.2 | **Verificación** |  | 0.12d | 2010-10-09 00:00 A | 2010-10-09 03:00 A |  | 100% |  |  |  |  |  | 12h | 12h |  |
| 54 | 3.1.1.2.1 | **Verificar casos de uso** |  | 0.12d | 2010-10-09 00:00 A | 2010-10-09 03:00 A |  | 100% |  |  |  |  |  | 12h | 12h |  |
| 55 | 3.1.1.2.1.1 | Verificación casos de uso Login, Iniciar iteración, guardar estado |  | 3h | 2010-10-09 00:00 A | 2010-10-09 03:00 A |  | 100% |  |  |  | start no earlier than 2010-10-09 00:00 | Juan Ghiringhelli | 3h | 3h | 3 horas |
| 56 | 3.1.1.2.1.2 | Verificación casos de uso Interrogar Personaje, Actualizar Famoso, Actualizar Ciudad |  | 3h | 2010-10-09 00:00 A | 2010-10-09 03:00 A |  | 100% |  |  |  | start no earlier than 2010-10-09 00:00 | Javier Madeiro | 3h | 3h | 3 horas |
| 57 | 3.1.1.2.1.3 | Verificación casos de uso Obtener Ciudades, Viajar, Emitir orden de arresto, Arrestar |  | 3h | 2010-10-09 00:00 A | 2010-10-09 03:00 A |  | 100% |  |  |  | start no earlier than 2010-10-09 00:00 | Marcos Sander | 3h | 3h | 3 horas |
| 58 | 3.1.1.2.1.4 | Verificación casos de uso Listar Sospechoso, Filtrar sospechoso, Lenguaje, Salir |  | 3h | 2010-10-09 00:00 A | 2010-10-09 03:00 A |  | 100% |  |  |  | start no earlier than 2010-10-09 00:00 | Alejandro García | 3h | 3h | 3 horas |
| 59 | 3.1.1.3 | **Gestión del Proyecto** |  | 6.17d | 2010-10-03 00:00 A | 2010-10-09 04:00 A |  | 100% |  |  |  |  |  | 12h | 12h |  |
| 60 | 3.1.1.3.1 | Seguimiento en jornadas implementación |  | 5h | 2010-10-03 00:00 A | 2010-10-03 05:00 A |  | 100% |  |  |  | start no earlier than 2010-10-03 00:00 | Juan Ghiringhelli | 5h | 5h | 5 horas |
| 61 | 3.1.1.3.2 | Presentación al director |  | 2h | 2010-10-05 00:00 A | 2010-10-05 02:00 A | 60 | 100% |  |  |  | start no earlier than 2010-10-05 00:00 | Juan Ghiringhelli | 2h | 2h | 2 horas |
| 62 | 3.1.1.3.3 | Gestión de riesgos |  | 1h | 2010-10-06 00:00 A | 2010-10-06 01:00 A | 61 | 100% |  |  |  | start no earlier than 2010-10-06 00:00 | Juan Ghiringhelli | 1h | 1h | 1 hora |
| 63 | 3.1.1.3.4 | Modificar cronograma |  | 4h | 2010-10-09 00:00 A | 2010-10-09 04:00 A | 60 | 100% |  |  |  | start no earlier than 2010-10-09 00:00 | Juan Ghiringhelli | 4h | 4h | 4 horas |
| 64 | 3.1.1.4 | **Gestión de la Calidad** |  | 5.19d? | 2010-10-04 09:00 A | 2010-10-09 13:30 A |  | 100% |  |  |  |  |  | 21h | 21h |  |
| 65 | 3.1.1.4.1 | **RTF Planificación del Proyecto** |  | 0.19d? | 2010-10-04 09:00 A | 2010-10-04 13:30 A |  | 100% |  |  |  |  |  | 9h | 9h |  |
| 66 | 3.1.1.4.1.1 | Estudio del Project del Proyecto |  | 1h? | 2010-10-04 09:00 A | 2010-10-04 10:00 A |  | 100% |  |  |  |  | Javier Madeiro | 1h | 1h | 1 hora? |
| 67 | 3.1.1.4.1.2 | Revisión Técnica |  | 1.5h? | 2010-10-04 10:00 A | 2010-10-04 11:30 A | 66 | 100% |  |  |  |  | Alejandro García; Javier Madeiro; Marcos Sander; Juan Ghiringhelli | 6h | 6h | 1,5 horas? |
| 68 | 3.1.1.4.1.3 | Conclusiones, proponer acciones correctivas |  | 1h? | 2010-10-04 11:30 A | 2010-10-04 12:30 A | 67 | 100% |  |  |  |  | Javier Madeiro | 1h | 1h | 1 hora? |
| 69 | 3.1.1.4.1.4 | Seguimiento de la RTF |  | 1h? | 2010-10-04 12:30 A | 2010-10-04 13:30 A | 68 | 100% |  |  |  |  | Javier Madeiro | 1h | 1h | 1 hora? |
| 70 | 3.1.1.4.2 | Revisión de Documentos |  | 6h? | 2010-10-09 07:30 A | 2010-10-09 13:30 A | 73 | 100% |  |  |  |  | Alejandro García; Javier Madeiro | 12h | 12h | 6 horas? |

| ID | WBS | Task | Duration | Start | Finish | Predecessors | Complete | Constraint | Resources | Work | Actual work | Text1 |
| --- | --- | --- | --- | --- | --- | --- | --- | --- | --- | --- | --- | --- |
| 71 | 3.1.1.5 | **Gestión de la Configuración** | 0.04d | 2010-10-10 00:00 A | 2010-10-10 01:00 A |  | 100% |  |  | 1h | 1h |  |
| 72 | 3.1.1.5.1 | Establecimiento de línea base de código | 1h | 2010-10-10 00:00 A | 2010-10-10 01:00 A | 52 | 100% | start no earlier than 2010-10-09 00:00 | Vicente Acosta | 1h | 1h | 1 hora |
| 73 | 3.1.1.6 | **Entregables** | 4.94d? | 2010-10-04 09:00 A | 2010-10-09 07:30 A |  | 100% |  |  | 52.5h | 52.5h |  |
| 74 | 3.1.1.6.1 | Documento de evaluación y ajuste del plan de VyV | 2h | 2010-10-09 03:00 A | 2010-10-09 05:00 A | 53 | 100% |  | Alejandro García | 2h | 2h | 2 horas |
| 75 | 3.1.1.6.2 | Evaluación de la verificación | 2h | 2010-10-09 00:00 A | 2010-10-09 02:00 A |  | 100% | start no earlier than 2010-10-09 00:00 | Alejandro García | 2h | 2h | 2 horas |
| 76 | 3.1.1.6.3 | Informe de verificación de documento | 2h | 2010-10-09 00:00 A | 2010-10-09 02:00 A |  | 100% | start no earlier than 2010-10-09 00:00 | Alejandro García | 2h | 2h | 2 horas |
| 77 | 3.1.1.6.4 | Reporte de pruebas | 4h | 2010-10-09 00:00 A | 2010-10-09 04:00 A |  | 100% | start no earlier than 2010-10-09 00:00 | Alejandro García | 4h | 4h | 4 horas |
| 78 | 3.1.1.6.5 | Documento de evaluación y ajuste del plan de calidad | 2h | 2010-10-09 00:00 A | 2010-10-09 02:00 A |  | 100% | start no earlier than 2010-10-09 00:00 | Javier Madeiro | 2h | 2h | 2 horas |
| 79 | 3.1.1.6.6 | Informe de revisión de SQA | 2h | 2010-10-09 00:00 A | 2010-10-09 02:00 A |  | 100% | start no earlier than 2010-10-09 00:00 | Javier Madeiro | 2h | 2h | 2 horas |
| 80 | 3.1.1.6.7 | Informe de RTF | 1.5h | 2010-10-07 00:00 A | 2010-10-07 01:30 A |  | 100% | start no earlier than 2010-10-07 00:00 | Javier Madeiro | 1.5h | 1.5h | 1,5 horas |
| 81 | 3.1.1.6.8 | Materiales para soporte al usuario | 2h | 2010-10-07 00:00 A | 2010-10-07 02:00 A |  | 100% | start no earlier than 2010-10-07 00:00 | José Cordero | 2h | 2h | 2 horas |
| 82 | 3.1.1.6.9 | Acta de reunión con el director del proyecto | 0.5h | 2010-10-06 00:00 A | 2010-10-06 00:30 A |  | 100% | start no earlier than 2010-10-06 00:00 | Juan Ghiringhelli | 0.5h | 0.5h | 0,5 horas |
| 83 | 3.1.1.6.10 | Documento de riesgos | 1h | 2010-10-06 00:00 A | 2010-10-06 01:00 A |  | 100% | start no earlier than 2010-10-06 00:00 | Juan Ghiringhelli | 1h | 1h | 1 hora |
| 84 | 3.1.1.6.11 | Informe de situación de proyecto | 1h | 2010-10-09 00:00 A | 2010-10-09 01:00 A |  | 100% | start no earlier than 2010-10-09 00:00 | Juan Ghiringhelli | 1h | 1h | 1 hora |
| 85 | 3.1.1.6.12 | Presentación al director del proyecto | 0.5d | 2010-10-04 09:00 A | 2010-10-04 21:00 A |  | 100% |  | Juan Ghiringhelli | 12h | 12h | 0,5 días |
| 86 | 3.1.1.6.13 | Registro de actividades | 1h | 2010-10-09 00:00 A | 2010-10-09 01:00 A |  | 100% | start no earlier than 2010-10-09 00:00 | Juan Ghiringhelli | 1h | 1h | 1 hora |
| 87 | 3.1.1.6.14 | Modelo de diseño | 6h | 2010-10-09 00:00 A | 2010-10-09 06:00 A |  | 100% | start no earlier than 2010-10-09 00:00 | Marcos Sander | 6h | 6h | 6 horas |
| 88 | 3.1.1.6.15 | Plan de desarrollo | 2h | 2010-10-09 00:00 A | 2010-10-09 02:00 A |  | 100% | start no earlier than 2010-10-09 00:00 | Marcos Sander | 2h | 2h | 2 horas |
| 89 | 3.1.1.6.16 | Informe de integración | 2h | 2010-10-09 00:00 A | 2010-10-09 02:00 A |  | 100% | start no earlier than 2010-10-09 00:00 | Ignacio Infante | 2h | 2h | 2 horas |
| 90 | 3.1.1.6.17 | Plan de integración de la iteración | 2h | 2010-10-09 00:00 A | 2010-10-09 02:00 A |  | 100% | start no earlier than 2010-10-09 00:00 | Ignacio Infante | 2h | 2h | 2 horas |
| 91 | 3.1.1.6.18 | Informe de verificación unitaria | 0.5h? | 2010-10-09 00:00 A | 2010-10-09 00:30 A |  | 100% | start no earlier than 2010-10-09 00:00 | Ignacio Infante; Marcos Sander | 1h | 1h | 0,5 horas |
| 92 | 3.1.1.6.19 | Descripción de la versión | 2h | 2010-10-09 00:00 A | 2010-10-09 02:00 A |  | 100% | start no earlier than 2010-10-09 00:00 | Vicente Acosta | 2h | 2h | 2 horas |
| 93 | 3.1.1.6.20 | Informe de la línea base del proyecto | 3h | 2010-10-09 00:00 A | 2010-10-09 03:00 A |  | 100% | start no earlier than 2010-10-09 00:00 | Vicente Acosta | 3h | 3h | 3 horas |
| 94 | 3.1.1.6.21 | Entrega semanal de SQA | 1.5h | 2010-10-09 06:00 A | 2010-10-09 07:30 A | 74, 75, 76, 77, 78, 79, 80, 81, 82, 83, 84, 85, 86, 87, 88, 89, 90, 91, 92, 93 | 100% |  | Javier Madeiro | 1.5h | 1.5h | 1,5 horas |
| 95 | 3.1.1.7 | Buffer de error | 3h | 2010-10-09 21:00 A | 2010-10-10 00:00 A |  | 100% | finish no earlier than 2010-10-10 00:00 | Alejandro García; Diego Ricca; Federico Andrade; Federico Trinidad; Ignacio Infante; Javier Madeiro; José Cordero; Juan Ghiringhelli; Leticia Vilariño; Marcos Sander; Martín Taruselli; Vicente Acosta | 36h | 36h | 3 horas |

| ID | WBS | Task | Duration | Start | Finish | Predecessors | Complete | Remaining | Total slack | Free slack | Constraint | Resources | Work | Actual work | Text1 |
| --- | --- | --- | --- | --- | --- | --- | --- | --- | --- | --- | --- | --- | --- | --- | --- |
| 96 | 3.1.2 | **Semana 10** | 6.5d? | 2010-10-11 00:00 A | 2010-10-17 12:00 | 47 | 74% | 1.66d? | 14.87d | 0d |  |  | 725h | 487.5h |  |
| 97 | 3.1.2.1 | **Diseño / Implementación** | 5.96d | 2010-10-11 00:00 A | 2010-10-16 23:00 |  | 73% | 1.63d | 15.41d |  |  |  | 117h | 95.5h |  |
| 98 | 3.1.2.1.1 | Armar datos Gran sospechoso | 10h | 2010-10-13 00:00 A | 2010-10-13 10:00 |  | 30% | 7h | 18.96d |  | start no earlier than 2010-10-13 00:00 | Federico Andrade; Vicente Acosta | 20h | 6h | 10 horas |
| 99 | 3.1.2.1.2 | Depurar parser para traer noticias dinámicas | 5h | 2010-10-13 00:00 A | 2010-10-13 05:00 |  | 30% | 3.5h | 19.16d |  | start no earlier than 2010-10-13 00:00 | Federico Trinidad | 5h | 1.5h | 5 horas |
| 100 | 3.1.2.1.3 | Armar algoritmo de tiempo para el juego | 2h | 2010-10-13 00:00 A | 2010-10-13 02:00 A |  | 100% |  |  |  | start no earlier than 2010-10-13 00:00 | Juan Ghiringhelli | 2h | 2h | 2 horas |
| 101 | 3.1.2.1.4 | Menú de ayuda | 4h | 2010-10-13 00:00 | 2010-10-13 04:00 |  |  |  | 19.21d |  | start no earlier than 2010-10-13 00:00 | José Cordero | 4h |  | 4 horas |
| 102 | 3.1.2.1.5 | Inicio pantallas inicio y fin del juego | 5h | 2010-10-13 00:00 A | 2010-10-13 05:00 A | 49 | 100% |  |  |  | start no earlier than 2010-10-13 00:00 | Leticia Vilariño; José Cordero | 10h | 10h | 5 horas |
| 103 | 3.1.2.1.6 | Inicio de código manejo multi-usuario | 10h | 2010-10-13 00:00 A | 2010-10-13 10:00 A |  | 100% |  |  |  | start no earlier than 2010-10-13 00:00 | Diego Ricca; Martín Taruselli | 20h | 20h | 10 horas |
| 104 | 3.1.2.1.7 | Diseño casos de uso para iteración 1 | 5h | 2010-10-11 00:00 A | 2010-10-11 05:00 A | 50 | 100% |  |  |  | start no earlier than 2010-10-11 00:00 | Marcos Sander | 5h | 5h | 5 horas |
| 105 | 3.1.2.1.8 | Diseño casos de prueba para iteración 1 | 5h | 2010-10-11 00:00 A | 2010-10-11 05:00 A | 51 | 100% |  |  |  | start no earlier than 2010-10-11 00:00 | Alejandro García | 5h | 5h | 5 horas |
| 106 | 3.1.2.1.9 | Verificación unitaria | 3h | 2010-10-16 16:00 A | 2010-10-16 19:00 A | 98, 99, 103 | 100% |  |  |  | finish no earlier than 2010-10-16 19:00 | Diego Ricca; Federico Andrade; Federico Trinidad; Ignacio Infante; Martín Taruselli; Vicente Acosta | 18h | 18h | 3 horas |
| 107 | 3.1.2.1.10 | Integración iteración 1 | 4h | 2010-10-16 19:00 A | 2010-10-16 23:00 A | 106 | 100% |  |  |  | start no earlier than 2010-10-15 09:00 | Diego Ricca; Federico Andrade; Federico Trinidad; Ignacio Infante; Martín Taruselli; Vicente Acosta; Leticia Vilariño | 28h | 28h | 4 horas |
| 108 | 3.1.2.2 | **Verificación** | 1.12d | 2010-10-11 00:00 A | 2010-10-12 03:00 A |  | 100% |  |  |  |  |  | 30h | 30h |  |
| 109 | 3.1.2.2.1 | **Verificar casos de uso** | 0.12d | 2010-10-11 00:00 A | 2010-10-11 03:00 A |  | 100% |  |  |  |  |  | 12h | 12h |  |
| 110 | 3.1.2.2.1.1 | Verificación casos de uso Login, Iniciar iteración, guardar estado | 3h | 2010-10-11 00:00 A | 2010-10-11 03:00 A |  | 100% |  |  |  | start no earlier than 2010-10-11 00:00 | Juan Ghiringhelli | 3h | 3h | 3 horas |
| 111 | 3.1.2.2.1.2 | Verificación casos de uso Interrogar Personaje, Actualizar Famoso, Actualizar Ciudad | 3h | 2010-10-11 00:00 A | 2010-10-11 03:00 A |  | 100% |  |  |  | start no earlier than 2010-10-11 00:00 | Javier Madeiro | 3h | 3h | 3 horas |
| 112 | 3.1.2.2.1.3 | Verificación casos de uso Obtener Ciudades, Viajar, Emitir orden de arresto, Arrestar | 3h | 2010-10-11 00:00 A | 2010-10-11 03:00 A |  | 100% |  |  |  | start no earlier than 2010-10-11 00:00 | Marcos Sander | 3h | 3h | 3 horas |
| 113 | 3.1.2.2.1.4 | Verificación casos de uso Listar Sospechoso, Filtrar sospechoso, Lenguaje, Salir | 3h | 2010-10-11 00:00 A | 2010-10-11 03:00 A |  | 100% |  |  |  | start no earlier than 2010-10-11 00:00 | Alejandro García | 3h | 3h | 3 horas |
| 114 | 3.1.2.2.2 | **Corregir casos de uso** | 0.12d | 2010-10-12 00:00 A | 2010-10-12 03:00 A |  | 100% |  |  |  |  |  | 18h | 18h | 0,13 días |
| 115 | 3.1.2.2.2.1 | Corregir casos de uso Login, Iniciar iteración, guardar estado | 3h | 2010-10-12 00:00 A | 2010-10-12 03:00 A | 110 | 100% |  |  |  | start no earlier than 2010-10-12 00:00 | Martín Taruselli; Diego Ricca | 6h | 6h | 3 horas |
| 116 | 3.1.2.2.2.2 | Corregir casos de uso Interrogar Personaje, Actualizar Famoso, Actualizar Ciudad | 3h | 2010-10-12 00:00 A | 2010-10-12 03:00 A | 111 | 100% |  |  |  | start no earlier than 2010-10-12 00:00 | Federico Trinidad; Vicente Acosta | 6h | 6h | 3 horas |
| 117 | 3.1.2.2.2.3 | Corregir casos de uso Obtener Ciudades, Viajar, Emitir orden de arresto, Arrestar | 3h | 2010-10-12 00:00 A | 2010-10-12 03:00 A | 112 | 100% |  |  |  | start no earlier than 2010-10-12 00:00 | Ignacio Infante | 3h | 3h | 3 horas |
| 118 | 3.1.2.2.2.4 | Corregir casos de uso Listar Sospechoso, Filtrar sospechoso, Lenguaje, Salir | 3h | 2010-10-12 00:00 A | 2010-10-12 03:00 A | 113 | 100% |  |  |  | start no earlier than 2010-10-12 00:00 | Federico Andrade | 3h | 3h | 3 horas |
| 119 | 3.1.2.3 | **Gestión del Proyecto** | 6.17d | 2010-10-11 00:00 A | 2010-10-17 04:00 A |  | 100% |  |  |  |  |  | 11h | 11h |  |
| 120 | 3.1.2.3.1 | Seguimiento por medio de mails, conversaciones, revisión de objetivos de fase y pedido de informes | 3h | 2010-10-11 00:00 A | 2010-10-11 03:00 A |  | 100% |  |  |  | start no earlier than 2010-10-11 00:00 | Juan Ghiringhelli | 3h | 3h | 3 horas |
| 121 | 3.1.2.3.2 | Revisar estimaciones y medidas | 2h | 2010-10-12 00:00 A | 2010-10-12 02:00 A |  | 100% |  |  |  | start no earlier than 2010-10-12 00:00 | Juan Ghiringhelli | 2h | 2h | 2 horas |
| 122 | 3.1.2.3.3 | Preparar reunión quincenal | 2h | 2010-10-14 00:00 A | 2010-10-14 02:00 A | 120 | 100% |  |  |  | start no earlier than 2010-10-14 00:00 | Juan Ghiringhelli | 2h | 2h | 2 horas |
| 123 | 3.1.2.3.4 | Seguimiento en jornadas de implementación | 4h | 2010-10-17 00:00 A | 2010-10-17 04:00 A |  | 100% |  |  |  | start no earlier than 2010-10-17 00:00 | Juan Ghiringhelli | 4h | 4h | 4 horas |

| ID | WBS | Task | Type | Duration | Start | Finish | Predecessors | Complete | Remaining | Total slack | Constraint | Resources | Work | Actual work | Text1 |
| --- | --- | --- | --- | --- | --- | --- | --- | --- | --- | --- | --- | --- | --- | --- | --- |
| 124 | 3.1.2.4 | **Gestión de la Calidad** |  | 0.25d? | 2010-10-16 11:00 A | 2010-10-16 17:00 A |  | 100% |  |  |  |  | 12h | 12h | 0,25 días? |
| 125 | 3.1.2.4.1 | Revisión de Documentos |  | 6h? | 2010-10-16 11:00 A | 2010-10-16 17:00 A | 130 | 100% |  |  |  | Alejandro García; Javier Madeiro | 12h | 12h | 6 horas? |
| 126 | 3.1.2.5 | **Gestión de la Configuración** |  | 4.5d? | 2010-10-13 00:00 A | 2010-10-17 12:00 |  | 67% | 1.5d? | 14.87d |  |  | 504h | 288h | 1 día? |
| 127 | 3.1.2.5.1 | Seguimiento de la línea base |  | 3d? | 2010-10-13 00:00 A | 2010-10-16 00:00 A |  | 100% |  |  | finish no earlier than 2010-10-16 00:00 | Vicente Acosta | 72h | 72h | 1,5 horas |
| 128 | 3.1.2.5.2 | Control de cambios |  | 3d? | 2010-10-13 00:00 A | 2010-10-16 00:00 A |  | 100% |  |  | start no earlier than 2010-10-13 00:00 | Vicente Acosta; Juan Ghiringhelli | 144h | 144h | 0,5 horas |
| 129 | 3.1.2.5.3 | Escribir notas de la versión |  | 4.5d? | 2010-10-13 00:00 A | 2010-10-17 12:00 |  | 22% | 3.5d? | 14.87d | start no earlier than 2010-10-13 00:00 | Vicente Acosta; Juan Ghiringhelli; Ignacio Infante | 288h | 72h | 0,5 horas |
| 130 | 3.1.2.6 | **Entregables** |  | 2.46d | 2010-10-14 00:00 A | 2010-10-16 11:00 A |  | 100% |  |  |  |  | 39h | 39h | 2,46 días |
| 131 | 3.1.2.6.1 | Modelo de casos de prueba |  | 10h | 2010-10-16 00:00 A | 2010-10-16 10:00 A |  | 100% |  |  | start no earlier than 2010-10-16 00:00 | Alejandro García | 10h | 10h | 10 horas |
| 132 | 3.1.2.6.2 | Plan de verificación de la iteración |  | 3h | 2010-10-16 00:00 A | 2010-10-16 03:00 A |  | 100% |  |  | start no earlier than 2010-10-16 00:00 | Alejandro García | 3h | 3h | 3 horas |
| 133 | 3.1.2.6.3 | Materiales para capacitación |  | 2h | 2010-10-14 00:00 A | 2010-10-14 02:00 A |  | 100% |  |  | start no earlier than 2010-10-14 00:00 | José Cordero | 2h | 2h | 2 horas |
| 134 | 3.1.2.6.4 | Materiales para soporte al usuario |  | 2h | 2010-10-14 00:00 A | 2010-10-14 02:00 A |  | 100% |  |  | start no earlier than 2010-10-14 00:00 | José Cordero | 2h | 2h | 2 horas |
| 135 | 3.1.2.6.5 | Acta de reunión de equipo |  | 0.5h | 2010-10-16 00:00 A | 2010-10-16 00:30 A |  | 100% |  |  | start no earlier than 2010-10-16 00:00 | Juan Ghiringhelli | 0.5h | 0.5h | 0,5 horas |
| 136 | 3.1.2.6.6 | Documento de riesgos |  | 0.5h | 2010-10-16 00:00 A | 2010-10-16 00:30 A |  | 100% |  |  | start no earlier than 2010-10-16 00:00 | Juan Ghiringhelli | 0.5h | 0.5h | 0,5 horas |
| 137 | 3.1.2.6.7 | Documento de validación con el cliente |  | 0.5h | 2010-10-14 00:00 A | 2010-10-14 00:30 A |  | 100% |  |  | start no earlier than 2010-10-14 00:00 | Juan Ghiringhelli | 0.5h | 0.5h | 0,5 horas |
| 138 | 3.1.2.6.8 | Informe de situación de proyecto |  | 1h | 2010-10-16 00:00 A | 2010-10-16 01:00 A |  | 100% |  |  | start no earlier than 2010-10-16 00:00 | Juan Ghiringhelli | 1h | 1h | 1 hora |
| 139 | 3.1.2.6.9 | Lecciones Aprendidas |  | 0.5h | 2010-10-16 00:00 A | 2010-10-16 00:30 A |  | 100% |  |  | start no earlier than 2010-10-16 00:00 | Juan Ghiringhelli | 0.5h | 0.5h | 0,5 horas |
| 140 | 3.1.2.6.10 | Plan de la iteración |  | 2h | 2010-10-16 00:00 A | 2010-10-16 02:00 A |  | 100% |  |  | start no earlier than 2010-10-16 00:00 | Juan Ghiringhelli | 2h | 2h | 2 horas |
| 141 | 3.1.2.6.11 | Registro de actividades |  | 1h | 2010-10-16 00:00 A | 2010-10-16 01:00 A |  | 100% |  |  | start no earlier than 2010-10-16 00:00 | Juan Ghiringhelli | 1h | 1h | 1 hora |
| 142 | 3.1.2.6.12 | Modelo de Datos |  | 1h | 2010-10-16 00:00 A | 2010-10-16 01:00 A |  | 100% |  |  | start no earlier than 2010-10-16 00:00 | Marcos Sander | 1h | 1h | 1 hora |
| 143 | 3.1.2.6.13 | Modelo de diseño |  | 4h | 2010-10-16 00:00 A | 2010-10-16 04:00 A |  | 100% |  |  | start no earlier than 2010-10-16 00:00 | Marcos Sander | 4h | 4h | 4 horas |
| 144 | 3.1.2.6.14 | Modelo de Implementación |  | 2h | 2010-10-16 00:00 A | 2010-10-16 02:00 A |  | 100% |  |  | start no earlier than 2010-10-16 00:00 | Marcos Sander | 2h | 2h | 2 horas |
| 145 | 3.1.2.6.15 | Ejecutable de la Iteración | milestone | 0h | 2010-10-16 00:00 A | 2010-10-16 00:00 A |  | 100% |  |  | start no earlier than 2010-10-16 00:00 | Ignacio Infante |  |  | 0 horas |
| 146 | 3.1.2.6.16 | Informe de integración |  | 1h | 2010-10-16 00:00 A | 2010-10-16 01:00 A |  | 100% |  |  | start no earlier than 2010-10-16 00:00 | Ignacio Infante | 1h | 1h | 1 hora |
| 147 | 3.1.2.6.17 | Plan de integración de la iteración |  | 1h | 2010-10-16 00:00 A | 2010-10-16 01:00 A |  | 100% |  |  | start no earlier than 2010-10-16 00:00 | Ignacio Infante | 1h | 1h | 1 hora |
| 148 | 3.1.2.6.18 | Gestión de cambios |  | 1h | 2010-10-16 00:00 A | 2010-10-16 01:00 A |  | 100% |  |  | start no earlier than 2010-10-16 00:00 | Vicente Acosta | 1h | 1h | 1 hora |
| 149 | 3.1.2.6.19 | Notas de la versión |  | 3h | 2010-10-16 00:00 A | 2010-10-16 03:00 A |  | 100% |  |  | start no earlier than 2010-10-16 00:00 | Vicente Acosta | 3h | 3h | 3 horas |
| 150 | 3.1.2.6.20 | Registro de versiones |  | 2h | 2010-10-16 00:00 A | 2010-10-16 02:00 A |  | 100% |  |  | start no earlier than 2010-10-16 00:00 | Vicente Acosta | 2h | 2h | 2 horas |
| 151 | 3.1.2.6.21 | Entrega semanal de SQA |  | 1h | 2010-10-16 10:00 A | 2010-10-16 11:00 A | 131, 132, 133, 134, 135, 136, 137, 138, 139, 140, 141, 142, 143, 144, 145, 146, 147, 148, 149, 150 | 100% |  |  | start no earlier than 2010-10-16 00:00 | Javier Madeiro | 1h | 1h | 1 hora |
| 152 | 3.1.2.7 | Presentación al cliente | milestone | 0h | 2010-10-13 00:00 A | 2010-10-13 00:00 A |  | 100% |  |  | start no earlier than 2010-10-13 00:00 |  |  |  | 0 horas |
| 153 | 3.1.2.8 | Buffer de error |  | 1h? | 2010-10-17 00:00 A | 2010-10-17 01:00 A |  | 100% |  |  | start no earlier than 2010-10-17 00:00 | Alejandro García; Diego Ricca; Federico Andrade; Federico Trinidad; Ignacio Infante; Javier Madeiro; José Cordero; Juan Ghiringhelli; Leticia Vilariño; Marcos Sander; Martín Taruselli; Vicente Acosta | 12h | 12h | 3 horas |

| ID | WBS | Task | Duration | Start | Finish | Predecessors | Complete | Remaining | Total slack | Constraint | Resources | Work | Actual work | Text1 |
| --- | --- | --- | --- | --- | --- | --- | --- | --- | --- | --- | --- | --- | --- | --- |
| 154 | 3.2 | **Iteración 2** | 21d? | 2010-10-17 04:00 A | 2010-11-07 04:00 | 46 | 35% | 13.62d? | 7.92d |  |  | 3093h | 1146h | 21 días |
| 155 | 3.2.1 | **Semana 11** | 7.83d? | 2010-10-17 04:00 A | 2010-10-25 00:00 | 96 | 64% | 2.83d? | 21.08d |  |  | 1938h | 1146h |  |
| 156 | 3.2.1.1 | **Diseño / Implementación** | 7.83d? | 2010-10-17 04:00 A | 2010-10-25 00:00 |  | 53% | 3.65d? | 21.08d |  |  | 976h | 568h |  |
| 157 | 3.2.1.1.1 | **Azure** | 5.83d? | 2010-10-17 04:00 A | 2010-10-23 00:00 |  | 86% | 0.81d? | 23.08d |  |  | 568h | 520h |  |
| 158 | 3.2.1.1.1.1 | Diseño del tiempo | 1d? | 2010-10-18 00:00 A | 2010-10-19 00:00 A |  | 100% |  |  | start no earlier than 2010-10-18 00:00 | Juan Ghiringhelli | 24h | 24h | 1 hora |
| 159 | 3.2.1.1.1.2 | Página de administrador | 1d? | 2010-10-20 00:00 A | 2010-10-21 00:00 A | 163 | 100% |  |  |  | Federico Trinidad | 24h | 24h | 4 horas |
| 160 | 3.2.1.1.1.3 | Algoritmo para generar sospechosos a partir de los reales | 5d? | 2010-10-18 00:00 A | 2010-10-23 00:00 A |  | 100% |  |  | finish no earlier than 2010-10-23 00:00 | Diego Ricca; Martín Taruselli; Federico Trinidad | 360h | 360h | 10 horas |
| 161 | 3.2.1.1.1.4 | Soporte multiusuario | 1.83d? | 2010-10-17 04:00 A | 2010-10-19 00:00 A |  | 100% |  |  | finish no earlier than 2010-10-19 00:00 | Vicente Acosta; Federico Andrade | 88h | 88h | 4 horas |
| 162 | 3.2.1.1.1.5 | Soporte del "Gran sospechoso" | 1d? | 2010-10-19 00:00 A | 2010-10-20 00:00 | 161 | 50% | 0.5d? | 26.08d |  | Vicente Acosta; Federico Andrade | 48h | 24h | 8 horas |
| 163 | 3.2.1.1.1.6 | Depurar pistas dinámicas | 1d? | 2010-10-18 00:00 | 2010-10-19 00:00 |  |  |  | 27.08d | start no earlier than 2010-10-18 00:00 | Federico Trinidad | 24h |  | 4 horas |
| 164 | 3.2.1.1.2 | **WP7** | 1d? | 2010-10-23 00:00 A | 2010-10-24 00:00 A |  | 100% |  |  |  |  | 48h | 48h |  |
| 165 | 3.2.1.1.2.1 | Listas datos sospechosos | 1d? | 2010-10-23 00:00 A | 2010-10-24 00:00 A | 166 | 100% |  |  |  | Leticia Vilariño; José Cordero | 48h | 48h | 8 horas |
| 166 | 3.2.1.1.3 | Adaptación de servicios de Azure a WP7 | 7.5d? | 2010-10-17 12:00 | 2010-10-25 00:00 |  |  |  | 21.08d | finish no earlier than 2010-10-23 00:00 | Ignacio Infante; Leticia Vilariño | 360h |  | 10 horas |
| 167 | 3.2.1.2 | **Verificación** | 3d? | 2010-10-18 00:00 A | 2010-10-21 00:00 |  | 67% | 1d? | 25.08d |  |  | 384h | 192h |  |
| 168 | 3.2.1.2.1 | **Verificación casos de uso** | 2d? | 2010-10-18 00:00 A | 2010-10-20 00:00 A |  | 100% |  |  |  |  | 192h | 192h |  |
| 169 | 3.2.1.2.1.1 | Verificar funcionamiento multi usuario | 2d? | 2010-10-18 00:00 A | 2010-10-20 00:00 A |  | 100% |  |  | finish no earlier than 2010-10-20 00:00 | Marcos Sander | 48h | 48h | 4 horas |
| 170 | 3.2.1.2.1.2 | Verificar GUI | 2d? | 2010-10-18 00:00 A | 2010-10-20 00:00 A |  | 100% |  |  | finish no earlier than 2010-10-20 00:00 | Juan Ghiringhelli | 48h | 48h | 4 horas |
| 171 | 3.2.1.2.1.3 | Verificar sospechosos Facebook | 2d? | 2010-10-18 00:00 A | 2010-10-20 00:00 A |  | 100% |  |  | finish no earlier than 2010-10-20 00:00 | Javier Madeiro | 48h | 48h | 4 horas |
| 172 | 3.2.1.2.1.4 | Verificación ciclos de vida | 2d? | 2010-10-18 00:00 A | 2010-10-20 00:00 A |  | 100% |  |  | finish no earlier than 2010-10-20 00:00 | Alejandro García | 48h | 48h | 4 horas |
| 173 | 3.2.1.2.2 | **Corregir casos de uso** | 1d? | 2010-10-20 00:00 | 2010-10-21 00:00 |  |  |  | 25.08d |  |  | 192h |  |  |
| 174 | 3.2.1.2.2.1 | Corregir multi usuario | 1d? | 2010-10-20 00:00 | 2010-10-21 00:00 | 169 |  |  | 25.08d |  | Vicente Acosta; Federico Andrade | 48h |  | 4 horas |
| 175 | 3.2.1.2.2.2 | Corregir GUI | 1d? | 2010-10-20 00:00 | 2010-10-21 00:00 | 170 |  |  | 25.08d |  | Leticia Vilariño; José Cordero | 48h |  | 4 horas |
| 176 | 3.2.1.2.2.3 | Corregir sospechosos FB | 1d? | 2010-10-20 00:00 | 2010-10-21 00:00 | 171 |  |  | 25.08d |  | Vicente Acosta; Federico Andrade | 48h |  | 4 horas |
| 177 | 3.2.1.2.2.4 | Corregir errores encontrados en ciclos de vida | 1d? | 2010-10-20 00:00 | 2010-10-21 00:00 | 172 |  |  | 25.08d |  | Diego Ricca; Martín Taruselli | 48h |  | 4 horas |

| ID | WBS | Task | Type | Duration | Start | Finish | Predecessors | Complete | Remaining | Total slack | Constraint | Resources | Work | Actual work | Text1 |
| --- | --- | --- | --- | --- | --- | --- | --- | --- | --- | --- | --- | --- | --- | --- | --- |
| 178 | 3.2.1.3 | **Gestión del Proyecto** |  | 2.92d | 2010-10-17 04:00 A | 2010-10-20 02:00 A |  | 100% |  |  |  |  | 5h | 5h |  |
| 179 | 3.2.1.3.1 | Seguimiento por medio de mails, conversaciones, revisión de objetivos de fase y pedido de informes |  | 3h | 2010-10-17 04:00 A | 2010-10-17 07:00 A |  | 100% |  |  | start no earlier than 2010-10-11 00:00 | Juan Ghiringhelli | 3h | 3h | 3 horas |
| 180 | 3.2.1.3.2 | Seguimiento de riesgos |  | 2h | 2010-10-20 00:00 A | 2010-10-20 02:00 A |  | 100% |  |  | start no earlier than 2010-10-20 00:00 | Juan Ghiringhelli | 2h | 2h | 2 horas |
| 181 | 3.2.1.4 | **Gestión de la Calidad** |  | 0.21d? | 2010-10-17 04:00 A | 2010-10-17 09:00 A |  | 100% |  |  |  |  | 11h | 11h |  |
| 182 | 3.2.1.4.1 | **RTF del Código** |  | 0.21d? | 2010-10-17 04:00 A | 2010-10-17 09:00 A |  | 100% |  |  |  |  | 11h | 11h |  |
| 183 | 3.2.1.4.1.1 | Estudio del Project del Proyecto |  | 1h? | 2010-10-17 04:00 A | 2010-10-17 05:00 A |  | 100% |  |  |  | Javier Madeiro | 1h | 1h | 1 hora |
| 184 | 3.2.1.4.1.2 | Revisión Técnica |  | 2h? | 2010-10-17 05:00 A | 2010-10-17 07:00 A | 183 | 100% |  |  |  | Javier Madeiro; Marcos Sander; Juan Ghiringhelli; Ignacio Infante | 8h | 8h | 2 horas |
| 185 | 3.2.1.4.1.3 | Conclusiones, proponer acciones correctivas |  | 1h? | 2010-10-17 07:00 A | 2010-10-17 08:00 A | 184 | 100% |  |  |  | Javier Madeiro | 1h | 1h | 1 hora |
| 186 | 3.2.1.4.1.4 | Seguimiento de la RTF |  | 1h? | 2010-10-17 08:00 A | 2010-10-17 09:00 A | 185 | 100% |  |  |  | Javier Madeiro | 1h | 1h | 1 hora |
| 187 | 3.2.1.5 | Revisión de Documentos |  | 6h? | 2010-10-17 04:00 A | 2010-10-17 10:00 A |  | 100% |  |  |  | Alejandro García; Javier Madeiro | 12h | 12h | 6 horas |
| 188 | 3.2.1.6 | **Gestión de la Configuración** |  | 4d? | 2010-10-20 00:00 A | 2010-10-24 00:00 |  | 73% | 1.07d? | 22.08d |  |  | 504h | 312h |  |
| 189 | 3.2.1.6.1 | Seguimiento de la línea base |  | 3d? | 2010-10-20 00:00 A | 2010-10-23 00:00 A |  | 100% |  |  | finish no earlier than 2010-10-23 00:00 | Vicente Acosta | 72h | 72h | 1,5 horas |
| 190 | 3.2.1.6.2 | Describir la versión |  | 3d? | 2010-10-20 00:00 A | 2010-10-23 00:00 |  | 33% | 2d? | 0d | start no earlier than 2010-10-20 00:00 | Vicente Acosta; Juan Ghiringhelli; Ignacio Infante | 216h | 72h | 0,5 horas |
| 191 | 3.2.1.6.3 | Control de cambios |  | 3d? | 2010-10-20 00:00 A | 2010-10-23 00:00 A |  | 100% |  |  | start no earlier than 2010-10-20 00:00 | Vicente Acosta; Juan Ghiringhelli | 144h | 144h | 0,5 horas |
| 192 | 3.2.1.6.4 | Escribir notas de la versión |  | 1d? | 2010-10-23 00:00 A | 2010-10-24 00:00 | 190 | 33% | 0.67d? | 22.08d | finish no earlier than 2010-10-24 00:00 | Vicente Acosta; Juan Ghiringhelli; Ignacio Infante | 72h | 24h | 0,5 horas |
| 193 | 3.2.1.7 | **Entregables** |  | 2.23d | 2010-10-21 00:00 A | 2010-10-23 05:30 A |  | 100% |  |  |  |  | 34h | 34h |  |
| 194 | 3.2.1.7.1 | Documento de evaluación y ajuste del plan de VyV |  | 2h | 2010-10-23 00:00 A | 2010-10-23 02:00 A |  | 100% |  |  | start no earlier than 2010-10-23 00:00 | Alejandro García | 2h | 2h | 2 horas |
| 195 | 3.2.1.7.2 | Evaluación de la verificación |  | 3h | 2010-10-23 00:00 A | 2010-10-23 03:00 A |  | 100% |  |  | start no earlier than 2010-10-23 00:00 | Alejandro García | 3h | 3h | 3 horas |
| 196 | 3.2.1.7.3 | Informe de verificación de documento (Documentación técnica) |  | 2h | 2010-10-23 00:00 A | 2010-10-23 02:00 A |  | 100% |  |  | start no earlier than 2010-10-23 00:00 | Alejandro García | 2h | 2h | 2 horas |
| 197 | 3.2.1.7.4 | Reporte de pruebas |  | 4h | 2010-10-23 00:00 A | 2010-10-23 04:00 A |  | 100% |  |  | start no earlier than 2010-10-23 00:00 | Alejandro García | 4h | 4h | 4 horas |
| 198 | 3.2.1.7.5 | Documento de evaluación y ajuste del plan de calidad |  | 2h | 2010-10-23 00:00 A | 2010-10-23 02:00 A |  | 100% |  |  | start no earlier than 2010-10-23 00:00 | Javier Madeiro | 2h | 2h | 2 horas |
| 199 | 3.2.1.7.6 | Informe de revisión de SQA |  | 2h | 2010-10-23 00:00 A | 2010-10-23 02:00 A |  | 100% |  |  | start no earlier than 2010-10-23 00:00 | Javier Madeiro | 2h | 2h | 2 horas |
| 200 | 3.2.1.7.7 | Informe de RTF |  | 1.5h | 2010-10-23 00:00 A | 2010-10-23 01:30 A | 185 | 100% |  |  | start no earlier than 2010-10-23 00:00 | Javier Madeiro | 1.5h | 1.5h | 1,5 horas |
| 201 | 3.2.1.7.8 | Materiales para capacitación |  | 2h | 2010-10-21 00:00 A | 2010-10-21 02:00 A |  | 100% |  |  | start no earlier than 2010-10-21 00:00 | José Cordero | 2h | 2h | 2 horas |
| 202 | 3.2.1.7.9 | Materiales para soporte al usuario |  | 2h | 2010-10-21 00:00 A | 2010-10-21 02:00 A |  | 100% |  |  | start no earlier than 2010-10-21 00:00 | José Cordero | 2h | 2h | 2 horas |
| 203 | 3.2.1.7.10 | Documento de Evaluación y Ajustes al Plan del Proyecto |  | 1h | 2010-10-23 00:00 A | 2010-10-23 01:00 A |  | 100% |  |  | start no earlier than 2010-10-23 00:00 | Juan Ghiringhelli | 1h | 1h | 1 hora |
| 204 | 3.2.1.7.11 | Informe de situación de proyecto |  | 1h | 2010-10-23 00:00 A | 2010-10-23 01:00 A |  | 100% |  |  | start no earlier than 2010-10-23 00:00 | Juan Ghiringhelli | 1h | 1h | 1 hora |
| 205 | 3.2.1.7.12 | Registro de actividades |  | 1h | 2010-10-23 00:00 A | 2010-10-23 01:00 A |  | 100% |  |  | start no earlier than 2010-10-23 00:00 | Juan Ghiringhelli | 1h | 1h | 1 hora |
| 206 | 3.2.1.7.13 | Documentación técnica |  | 1h | 2010-10-23 00:00 A | 2010-10-23 01:00 A |  | 100% |  |  | start no earlier than 2010-10-23 00:00 | Juan Ghiringhelli; Vicente Acosta | 2h | 2h | 1 hora |
| 207 | 3.2.1.7.14 | Plan de desarrollo |  | 1h | 2010-10-23 00:00 A | 2010-10-23 01:00 A |  | 100% |  |  | start no earlier than 2010-10-23 00:00 | Marcos Sander | 1h | 1h | 1 hora |
| 208 | 3.2.1.7.15 | Ejecutable de la Iteración | milestone | 0h | 2010-10-23 00:00 A | 2010-10-23 00:00 A |  | 100% |  |  | start no earlier than 2010-10-23 00:00 | Marcos Sander |  |  | 0 horas |
| 209 | 3.2.1.7.16 | Informe de verificación unitaria |  | 0.5h | 2010-10-23 00:00 A | 2010-10-23 00:30 A |  | 100% |  |  | start no earlier than 2010-10-23 00:00 | Ignacio Infante; Marcos Sander | 1h | 1h | 0,5 horas |
| 210 | 3.2.1.7.17 | Descripción de la versión |  | 2h | 2010-10-23 00:00 A | 2010-10-23 02:00 A |  | 100% |  |  | start no earlier than 2010-10-23 00:00 | Vicente Acosta | 2h | 2h | 2 horas |
| 211 | 3.2.1.7.18 | Informe de la línea base del proyecto |  | 3h | 2010-10-23 00:00 A | 2010-10-23 03:00 A |  | 100% |  |  | start no earlier than 2010-10-23 00:00 | Vicente Acosta | 3h | 3h | 3 horas |
| 212 | 3.2.1.7.19 | Entrega semanal de SQA |  | 1.5h | 2010-10-23 04:00 A | 2010-10-23 05:30 A | 194, 195, 196, 197, 198, 199, 200, 201, 202, 203, 204, 205, 206, 207, 208, 209, 210, 211 | 100% |  |  |  | Javier Madeiro | 1.5h | 1.5h | 1,5 horas |
| 213 | 3.2.1.8 | Buffer de error |  | 1h? | 2010-10-24 00:00 A | 2010-10-24 01:00 A |  | 100% |  |  | start no earlier than 2010-10-24 00:00 | Alejandro García; Diego Ricca; Federico Andrade; Federico Trinidad; Ignacio Infante; Javier Madeiro; José Cordero; Juan Ghiringhelli; Leticia Vilariño; Marcos Sander; Martín Taruselli; Vicente Acosta | 12h | 12h | 1 hora? |

| ID | WBS | Task | Duration | Start | Finish | Predecessors | Total slack | Free slack | Constraint | Resources | Work | Text1 |
| --- | --- | --- | --- | --- | --- | --- | --- | --- | --- | --- | --- | --- |
| 214 | 3.2.2 | **Semana 12** | 14.1d? | 2010-10-24 01:00 | 2010-11-07 03:30 | 213 | 7.94d |  |  |  | 651.5h |  |
| 215 | 3.2.2.1 | **Diseño / Implementación** | 6.96d? | 2010-10-24 01:00 | 2010-10-31 00:00 |  | 15.04d |  |  |  | 167h |  |
| 216 | 3.2.2.1.1 | **Azure** | 5.96d? | 2010-10-24 01:00 | 2010-10-30 00:00 |  | 16.08d |  |  |  | 143h |  |
| 217 | 3.2.2.1.1.1 | **Comportamiento del juego según nivel** | 5.96d? | 2010-10-24 01:00 | 2010-10-30 00:00 |  | 16.08d |  |  |  | 143h |  |
| 218 | 3.2.2.1.1.1.1 | Orden de las pistas | 1d? | 2010-10-29 00:00 | 2010-10-30 00:00 | 160, 158 | 16.08d |  | finish no earlier than 2010-10-30 00:00 | Diego Ricca; Martín Taruselli | 48h | 10 horas |
| 219 | 3.2.2.1.1.1.2 | Tiempo substraído por actividad del jugador | 0.67d? | 2010-10-29 08:00 | 2010-10-30 00:00 | 158 | 16.08d |  | finish no earlier than 2010-10-30 00:00 | Diego Ricca; Martín Taruselli; Federico Trinidad | 48h | 20 horas |
| 220 | 3.2.2.1.1.1.3 | Depurar pistas dinámicas | 1.96d? | 2010-10-24 01:00 | 2010-10-26 00:00 |  | 20.08d |  | finish no earlier than 2010-10-26 00:00 | Federico Trinidad | 47h | 4 horas |
| 221 | 3.2.2.1.2 | **WP7** | 6d? | 2010-10-25 00:00 | 2010-10-31 00:00 |  | 14.08d |  |  |  | 24h |  |
| 222 | 3.2.2.1.2.1 | Pantalla Inicio | 1d? | 2010-10-27 00:00 | 2010-10-28 00:00 | 165 | 12.08d | 2d | finish no earlier than 2010-10-28 00:00 |  |  | 8 horas |
| 223 | 3.2.2.1.2.2 | Pantalla Fin | 1d? | 2010-10-30 00:00 | 2010-10-31 00:00 | 222 | 10.08d | 0.04d | finish no earlier than 2010-10-31 00:00 |  |  | 8 horas |
| 224 | 3.2.2.1.2.3 | Dibujo personajes para pantalla | 1d? | 2010-10-25 00:00 | 2010-10-26 00:00 |  | 20.08d |  | start no earlier than 2010-10-25 00:00 | Federico Andrade | 24h | 3 horas |
| 225 | 3.2.2.2 | Verificación | 1d? | 2010-10-24 01:00 | 2010-10-25 01:00 |  | 18.38d | 1.96d |  |  |  |  |
| 226 | 3.2.2.3 | **Gestión del Proyecto** | 3.08d | 2010-10-25 00:00 | 2010-10-28 02:00 |  | 18d |  |  |  | 5h |  |
| 227 | 3.2.2.3.1 | Seguimiento por medio de mails, conversaciones, revisión de objetivos de fase y pedido de informes | 3h | 2010-10-25 00:00 | 2010-10-25 03:00 |  | 20.96d |  | start no earlier than 2010-10-25 00:00 | Juan Ghiringhelli | 3h | 3 horas |
| 228 | 3.2.2.3.2 | Preparar reunión quincenal | 2h | 2010-10-28 00:00 | 2010-10-28 02:00 |  | 18d |  | start no earlier than 2010-10-28 00:00 | Juan Ghiringhelli | 2h | 2 horas |
| 229 | 3.2.2.4 | **Gestión de la Calidad** | 0.25d? | 2010-10-24 01:00 | 2010-10-24 07:00 |  | 21.79d |  |  |  | 23h |  |
| 230 | 3.2.2.4.1 | **RTF Planificación del Proyecto** | 0.08d? | 2010-10-24 01:00 | 2010-10-24 03:00 |  | 21.88d |  |  |  | 11h |  |
| 231 | 3.2.2.4.1.1 | Estudio del Project del Proyecto | 1h? | 2010-10-24 01:00 | 2010-10-24 02:00 |  | 22d |  |  | Javier Madeiro | 1h | 1 hora |
| 232 | 3.2.2.4.1.2 | Revisión Técnica | 2h? | 2010-10-24 01:00 | 2010-10-24 03:00 |  | 21.96d |  |  | Javier Madeiro; Marcos Sander; Juan Ghiringhelli; Diego Ricca | 8h | 2 horas |
| 233 | 3.2.2.4.1.3 | Conclusiones, proponer acciones correctivas | 1h? | 2010-10-24 01:00 | 2010-10-24 02:00 |  | 21.88d | 5.92d |  | Javier Madeiro | 1h | 1 hora |
| 234 | 3.2.2.4.1.4 | Seguimiento de la RTF | 1h? | 2010-10-24 01:00 | 2010-10-24 02:00 |  | 22d |  |  | Javier Madeiro | 1h | 1 hora |
| 235 | 3.2.2.4.2 | Revisión de Documentos | 6h? | 2010-10-24 01:00 | 2010-10-24 07:00 |  | 21.79d |  | start no earlier than 2010-10-17 01:00 | Alejandro García; Javier Madeiro | 12h | 6 horas |
| 236 | 3.2.2.5 | **Gestión de la Configuración** | 4d? | 2010-10-27 00:00 | 2010-10-31 00:00 |  | 15.08d |  |  |  | 408h |  |
| 237 | 3.2.2.5.1 | Seguimiento de la línea base | 3d? | 2010-10-27 00:00 | 2010-10-30 00:00 |  | 16.08d |  | finish no earlier than 2010-10-30 00:00 | Vicente Acosta | 72h | 1,5 horas |
| 238 | 3.2.2.5.2 | Control de cambios | 3d? | 2010-10-27 00:00 | 2010-10-30 00:00 |  | 16.08d |  | start no earlier than 2010-10-27 00:00 | Vicente Acosta; Juan Ghiringhelli | 144h | 0,5 horas |
| 239 | 3.2.2.5.3 | Describir la versión | 2d? | 2010-10-27 00:00 | 2010-10-29 00:00 | 225 | 16.42d | 1.33d | start no earlier than 2010-10-27 00:00 | Vicente Acosta; Juan Ghiringhelli; Ignacio Infante | 144h | 0,5 horas |
| 240 | 3.2.2.5.4 | Escribir notas de la versión | 0.67d? | 2010-10-30 08:00 | 2010-10-31 00:00 | 239 | 15.08d |  | finish no earlier than 2010-10-31 00:00 | Vicente Acosta; Juan Ghiringhelli; Ignacio Infante | 48h | 0,5 horas |

| ID | WBS | Task | Type | Duration | Start | Finish | Predecessors | Total slack | Free slack | Constraint | Resources | Work | Text1 |
| --- | --- | --- | --- | --- | --- | --- | --- | --- | --- | --- | --- | --- | --- |
| 241 | 3.2.2.6 | **Entregables** |  | 10.15d | 2010-10-28 00:00 | 2010-11-07 03:30 |  | 7.94d |  |  |  | 36.5h |  |
| 242 | 3.2.2.6.1 | Evaluación de la verificación |  | 2h | 2010-10-30 00:00 | 2010-10-30 02:00 |  | 15.94d | 8d | start no earlier than 2010-10-30 00:00 | Alejandro García | 2h | 2 horas |
| 243 | 3.2.2.6.2 | Modelo de casos de prueba |  | 5h | 2010-10-30 00:00 | 2010-10-30 05:00 |  | 15.81d | 7.88d | start no earlier than 2010-10-30 00:00 | Alejandro García | 5h | 5 horas |
| 244 | 3.2.2.6.3 | Plan de verificación de la iteración |  | 2h | 2010-10-30 00:00 | 2010-10-30 02:00 |  | 15.94d | 8d | start no earlier than 2010-10-30 00:00 | Alejandro García | 2h | 2 horas |
| 245 | 3.2.2.6.4 | Reporte de pruebas |  | 4h | 2010-10-30 00:00 | 2010-10-30 04:00 |  | 15.85d | 7.92d | start no earlier than 2010-10-30 00:00 | Alejandro García | 4h | 4 horas |
| 246 | 3.2.2.6.5 | Informe de RTF |  | 1.5h | 2010-10-30 00:00 | 2010-10-30 01:30 | 233 | 15.96d | 8.02d | start no earlier than 2010-10-30 00:00 | Javier Madeiro | 1.5h | 1,5 horas |
| 247 | 3.2.2.6.6 | Materiales para capacitación |  | 2h | 2010-10-28 00:00 | 2010-10-28 02:00 |  | 17.94d | 10d | start no earlier than 2010-10-28 00:00 | José Cordero | 2h | 2 horas |
| 248 | 3.2.2.6.7 | Materiales para soporte al usuario |  | 2h | 2010-10-28 00:00 | 2010-10-28 02:00 |  | 17.94d | 10d | start no earlier than 2010-10-28 00:00 | José Cordero | 2h | 2 horas |
| 249 | 3.2.2.6.8 | Informe de situación de proyecto |  | 1h | 2010-10-30 00:00 | 2010-10-30 01:00 |  | 15.98d | 8.04d | start no earlier than 2010-10-30 00:00 | Juan Ghiringhelli | 1h | 1 hora |
| 250 | 3.2.2.6.9 | Lecciones Aprendidas |  | 0.5h | 2010-10-30 00:00 | 2010-10-30 00:30 |  | 16d | 8.06d | start no earlier than 2010-10-30 00:00 | Juan Ghiringhelli | 0.5h | 0,5 horas |
| 251 | 3.2.2.6.10 | Presentación del sistema |  | 3h | 2010-10-30 00:00 | 2010-10-30 03:00 |  | 15.9d | 7.96d | start no earlier than 2010-10-30 00:00 | Juan Ghiringhelli | 3h | 3 horas |
| 252 | 3.2.2.6.11 | Registro de actividades |  | 1h | 2010-10-30 00:00 | 2010-10-30 01:00 |  | 15.98d | 8.04d | start no earlier than 2010-10-30 00:00 | Juan Ghiringhelli | 1h | 1 hora |
| 253 | 3.2.2.6.12 | Documentación técnica |  | 1h | 2010-10-30 00:00 | 2010-10-30 01:00 |  | 15.98d | 8.04d | start no earlier than 2010-10-30 00:00 | Marcos Sander | 1h | 1 hora |
| 254 | 3.2.2.6.13 | Plan de desarrollo |  | 1h | 2010-10-30 00:00 | 2010-10-30 01:00 |  | 15.98d | 8.04d | start no earlier than 2010-10-30 00:00 | Marcos Sander | 1h | 1 hora |
| 255 | 3.2.2.6.14 | Informe de integración |  | 1h | 2010-10-30 00:00 | 2010-10-30 01:00 |  | 15.98d | 8.04d | start no earlier than 2010-10-30 00:00 | Ignacio Infante | 1h | 1 hora |
| 256 | 3.2.2.6.15 | Descripción de la versión |  | 2h | 2010-10-30 00:00 | 2010-10-30 02:00 |  | 15.94d | 8d | start no earlier than 2010-10-30 00:00 | Vicente Acosta | 2h | 2 horas |
| 257 | 3.2.2.6.16 | Gestión de cambios |  | 1h | 2010-10-30 00:00 | 2010-10-30 01:00 |  | 15.98d | 8.04d | start no earlier than 2010-10-30 00:00 | Vicente Acosta | 1h | 1 hora |
| 258 | 3.2.2.6.17 | Notas de la versión |  | 3h | 2010-10-30 00:00 | 2010-10-30 03:00 |  | 15.9d | 7.96d | start no earlier than 2010-10-30 00:00 | Vicente Acosta | 3h | 3 horas |
| 259 | 3.2.2.6.18 | Registro de versiones |  | 2h | 2010-10-30 00:00 | 2010-10-30 02:00 |  | 15.94d | 8d | start no earlier than 2010-10-30 00:00 | Vicente Acosta | 2h | 2 horas |
| 260 | 3.2.2.6.19 | Entrega semanal de SQA |  | 1.5h | 2010-11-07 02:00 | 2010-11-07 03:30 | 242, 243, 244, 245, 246, 247, 248, 249, 250, 251, 252, 253, 254, 255, 256, 257, 258, 259, 290, 291, 292 | 7.94d |  |  | Javier Madeiro | 1.5h | 1,5 horas |
| 261 | 3.2.2.7 | Presentación al cliente | milestone | 0h | 2010-10-27 00:00 | 2010-10-27 00:00 |  | 19.08d |  | start no earlier than 2010-10-27 00:00 |  |  | 0 horas |
| 262 | 3.2.2.8 | Buffer de error |  | 1h? | 2010-10-31 00:00 | 2010-10-31 01:00 |  | 10.04d | 0d | start no earlier than 2010-10-31 00:00 | Alejandro García; Diego Ricca; Federico Andrade; Federico Trinidad; Ignacio Infante; Javier Madeiro; José Cordero; Juan Ghiringhelli; Leticia Vilariño; Marcos Sander; Martín Taruselli; Vicente Acosta | 12h | 1 hora? |
| 263 | 3.2.3 | **Semana 13** |  | 7.12d? | 2010-10-31 01:00 | 2010-11-07 04:00 | 262 | 7.92d |  |  |  | 503.5h |  |
| 264 | 3.2.3.1 | **Diseño / Implementación** |  | 6.96d? | 2010-10-31 01:00 | 2010-11-07 00:00 |  | 8.08d |  |  |  |  |  |
| 265 | 3.2.3.1.1 | Azure |  | 1d? | 2010-10-31 01:00 | 2010-11-01 01:00 |  | 14.04d |  |  |  |  |  |

| ID | WBS | Task | Type | Duration | Start | Finish | Predecessors | Total slack | Free slack | Constraint | Resources | Work | Text1 |
| --- | --- | --- | --- | --- | --- | --- | --- | --- | --- | --- | --- | --- | --- |
| 266 | 3.2.3.1.2 | **WP7** |  | 6.96d? | 2010-10-31 01:00 | 2010-11-07 00:00 |  | 8.08d |  |  |  |  |  |
| 267 | 3.2.3.1.2.1 | Destino geográfico del avión real |  | 3d? | 2010-10-31 01:00 | 2010-11-03 01:00 | 223 | 10.04d | 1.96d | start no earlier than 2010-10-31 00:00 |  |  | 6 horas |
| 268 | 3.2.3.1.2.2 | Mejoras estéticas |  | 2d? | 2010-11-05 00:00 | 2010-11-07 00:00 | 267 | 8.08d |  | finish no earlier than 2010-11-07 00:00 |  |  | 8 horas |
| 269 | 3.2.3.2 | **Verificación** |  | 0.75d? | 2010-11-05 06:00 | 2010-11-06 00:00 |  | 9.08d |  |  |  | 72h |  |
| 270 | 3.2.3.2.1 | Ciclos de vida (a definir) |  | 0.75d? | 2010-11-05 06:00 | 2010-11-06 00:00 |  | 9.08d |  | finish no earlier than 2010-11-06 00:00 | Alejandro García; Juan Ghiringhelli; Javier Madeiro; Marcos Sander | 72h | X horas |
| 271 | 3.2.3.3 | **Gestión del Proyecto** |  | 6.17d | 2010-11-01 00:00 | 2010-11-07 04:00 |  | 7.92d |  |  |  | 11h |  |
| 272 | 3.2.3.3.1 | Seguimiento por medio de mails, conversaciones, revisión de objetivos de fase y pedido de informes |  | 3h | 2010-11-01 00:00 | 2010-11-01 03:00 |  | 13.96d |  | start no earlier than 2010-11-01 00:00 | Juan Ghiringhelli | 3h | 3 horas |
| 273 | 3.2.3.3.2 | Evaluar la fase |  | 2h | 2010-11-04 00:00 | 2010-11-04 02:00 |  | 11d |  | start no earlier than 2010-11-04 00:00 | Juan Ghiringhelli | 2h | 2 horas |
| 274 | 3.2.3.3.3 | Seguimiento en jornadas de implementación |  | 4h | 2010-11-07 00:00 | 2010-11-07 04:00 |  | 7.92d |  | start no earlier than 2010-11-07 00:00 | Juan Ghiringhelli | 4h | 4 horas |
| 275 | 3.2.3.3.4 | Preparar reunión fin de fase |  | 2h | 2010-11-04 00:00 | 2010-11-04 02:00 |  | 11d |  | start no earlier than 2010-11-04 00:00 | Juan Ghiringhelli | 2h | 2 horas |
| 276 | 3.2.3.4 | **Gestión de la Calidad** |  | 0.25d? | 2010-10-31 01:00 | 2010-10-31 07:00 |  | 14.79d |  |  |  | 12h | 0,25 días? |
| 277 | 3.2.3.4.1 | Revisión de Documentos |  | 6h? | 2010-10-31 01:00 | 2010-10-31 07:00 |  | 14.79d |  | start no earlier than 2010-10-17 01:00 | Alejandro García; Javier Madeiro | 12h | 6 horas? |
| 278 | 3.2.3.5 | **Gestión de la Configuración** |  | 3d? | 2010-11-03 00:00 | 2010-11-06 00:00 |  | 9.08d |  |  |  | 360h | 1 día? |
| 279 | 3.2.3.5.1 | Seguimiento de la línea base |  | 3d? | 2010-11-03 00:00 | 2010-11-06 00:00 |  | 9.08d |  | finish no earlier than 2010-11-06 00:00 | Vicente Acosta | 72h | 1,5 horas |
| 280 | 3.2.3.5.2 | Control de cambios |  | 3d? | 2010-11-03 00:00 | 2010-11-06 00:00 |  | 9.08d |  | start no earlier than 2010-11-03 00:00 | Vicente Acosta; Juan Ghiringhelli | 144h | 0,5 horas |
| 281 | 3.2.3.5.3 | Escribir notas de la versión |  | 2d? | 2010-11-03 00:00 | 2010-11-05 00:00 |  | 10.08d |  | start no earlier than 2010-11-03 00:00 | Vicente Acosta; Juan Ghiringhelli; Ignacio Infante | 144h | 0,5 horas |
| 282 | 3.2.3.6 | **Entregables** |  | 4.08d | 2010-11-03 00:00 | 2010-11-07 02:00 |  | 8d |  |  |  | 36.5h | 3,27 días |
| 283 | 3.2.3.6.1 | Evaluación de la verificación |  | 2h | 2010-11-06 00:00 | 2010-11-06 02:00 |  | 8.94d | 0.12d | start no earlier than 2010-11-06 00:00 | Alejandro García | 2h | 2 horas |
| 284 | 3.2.3.6.2 | Informe de verificación del sistema |  | 3h | 2010-11-06 00:00 | 2010-11-06 03:00 |  | 8.9d | 0.08d | start no earlier than 2010-11-06 00:00 | Alejandro García | 3h | 3 horas |
| 285 | 3.2.3.6.3 | Reporte de pruebas |  | 5h | 2010-11-06 00:00 | 2010-11-06 05:00 |  | 8.81d | 0d | start no earlier than 2010-11-06 00:00 | Alejandro García | 5h | 5 horas |
| 286 | 3.2.3.6.4 | Reporte Final de Pruebas de Aceptación |  | 4h | 2010-11-06 00:00 | 2010-11-06 04:00 |  | 8.85d | 0.04d | start no earlier than 2010-11-06 00:00 | Alejandro García | 4h | 4 horas |
| 287 | 3.2.3.6.5 | Informe de revisión de SQA |  | 2h | 2010-11-06 00:00 | 2010-11-06 02:00 |  | 8.94d | 0.12d | start no earlier than 2010-11-06 00:00 | Javier Madeiro | 2h | 2 horas |
| 288 | 3.2.3.6.6 | Materiales para capacitación |  | 2h | 2010-11-04 00:00 | 2010-11-04 02:00 |  | 10.94d | 2.12d | start no earlier than 2010-11-04 00:00 | José Cordero | 2h | 2 horas |
| 289 | 3.2.3.6.7 | Materiales para soporte al usuario |  | 2h | 2010-11-04 00:00 | 2010-11-04 02:00 |  | 10.94d | 2.12d | start no earlier than 2010-11-04 00:00 | José Cordero | 2h | 2 horas |
| 290 | 3.2.3.6.8 | Acta de reunión de equipo |  | 0.5h | 2010-11-07 00:00 | 2010-11-07 00:30 |  | 8d | 0.06d | start no earlier than 2010-11-07 00:00 | Juan Ghiringhelli | 0.5h | 0,5 horas |
| 291 | 3.2.3.6.9 | Informe de conclusiones de la fase |  | 1h | 2010-11-07 00:00 | 2010-11-07 01:00 |  | 7.98d | 0.04d | start no earlier than 2010-11-07 00:00 | Juan Ghiringhelli | 1h | 1 hora |
| 292 | 3.2.3.6.10 | Plan de la iteración |  | 2h | 2010-11-07 00:00 | 2010-11-07 02:00 |  | 7.94d | 0d | start no earlier than 2010-11-07 00:00 | Juan Ghiringhelli | 2h | 2 horas |
| 293 | 3.2.3.6.11 | Acta de reunión con el director del proyecto |  | 0.5h | 2010-11-03 00:00 | 2010-11-03 00:30 |  | 12d | 3.19d | start no earlier than 2010-11-03 00:00 | Juan Ghiringhelli | 0.5h | 0,5 horas |
| 294 | 3.2.3.6.12 | Informe de situación de proyecto |  | 1h | 2010-11-06 00:00 | 2010-11-06 01:00 |  | 8.98d | 0.17d | start no earlier than 2010-11-06 00:00 | Juan Ghiringhelli | 1h | 1 hora |
| 295 | 3.2.3.6.13 | Presentación al director del proyecto |  | 2h | 2010-11-03 00:00 | 2010-11-03 02:00 |  | 11.94d | 3.12d | start no earlier than 2010-11-03 00:00 | Juan Ghiringhelli | 2h | 2 horas |
| 296 | 3.2.3.6.14 | Registro de actividades |  | 1h | 2010-11-06 00:00 | 2010-11-06 01:00 |  | 8.98d | 0.17d | start no earlier than 2010-11-06 00:00 | Juan Ghiringhelli | 1h | 1 hora |
| 297 | 3.2.3.6.15 | Informe de verificación de integración |  | 1h | 2010-11-06 00:00 | 2010-11-06 01:00 |  | 8.98d | 0.17d | start no earlier than 2010-11-06 00:00 | Alejandro García; Ignacio Infante | 2h | 1 hora |
| 298 | 3.2.3.6.16 | Descripción de la versión |  | 2h | 2010-11-06 00:00 | 2010-11-06 02:00 |  | 8.94d | 0.12d | start no earlier than 2010-11-06 00:00 | Vicente Acosta | 2h | 2 horas |
| 299 | 3.2.3.6.17 | Informe de la línea base del proyecto |  | 3h | 2010-11-06 00:00 | 2010-11-06 03:00 |  | 8.9d | 0.08d | start no earlier than 2010-11-06 00:00 | Vicente Acosta | 3h | 3 horas |
| 300 | 3.2.3.6.18 | Entrega semanal de SQA |  | 1.5h | 2010-11-06 05:00 | 2010-11-06 06:30 | 283, 284, 285, 286, 287, 288, 289, 293, 294, 295, 296, 297, 298, 299 | 8.81d |  | start no earlier than 2010-11-06 00:00 | Javier Madeiro | 1.5h | 1,5 horas |
| 301 | 3.2.3.7 | Presentación al cliente | milestone | 0h | 2010-11-03 00:00 | 2010-11-03 00:00 |  | 12.08d |  | start no earlier than 2010-11-03 00:00 | Juan Ghiringhelli |  | 0 horas |
| 302 | 3.2.3.8 | Buffer de error |  | 1h? | 2010-11-07 00:00 | 2010-11-07 01:00 |  | 8.04d |  | start no earlier than 2010-11-07 00:00 | Alejandro García; Diego Ricca; Federico Andrade; Federico Trinidad; Ignacio Infante; Javier Madeiro; José Cordero; Juan Ghiringhelli; Leticia Vilariño; Marcos Sander; Martín Taruselli; Vicente Acosta | 12h | 1 hora? |

| ID | WBS | Task | Type | Duration | Start | Finish | Predecessors | Total slack | Free slack | Constraint | Resources | Work | Text1 |
| --- | --- | --- | --- | --- | --- | --- | --- | --- | --- | --- | --- | --- | --- |
| 303 | 4 | **Fase Implantación** |  | 10.92d? | 2010-11-07 04:00 | 2010-11-18 02:00 | 45 | 0d |  |  |  | 90h |  |
| 304 | 4.1 | **Iteración 1** |  | 10.92d? | 2010-11-07 04:00 | 2010-11-18 02:00 |  | 0d |  |  |  | 90h |  |
| 305 | 4.1.1 | **Semana 14** |  | 10.92d? | 2010-11-07 04:00 | 2010-11-18 02:00 |  | 0d |  |  |  | 90h |  |
| 306 | 4.1.1.1 | Diseño / Implementación |  | 1d? | 2010-11-07 04:00 | 2010-11-08 04:00 |  | 9.92d |  |  |  |  | 1 día? |
| 307 | 4.1.1.2 | Verificación |  | 1d? | 2010-11-07 04:00 | 2010-11-08 04:00 |  | 9.92d |  |  |  |  | 1 día? |
| 308 | 4.1.1.3 | **Gestión del Proyecto** |  | 2.08d | 2010-11-16 00:00 | 2010-11-18 02:00 |  | 0d |  |  |  | 12h |  |
| 309 | 4.1.1.3.1 | Evaluación de satisfacción del cliente |  | 2h | 2010-11-17 00:00 | 2010-11-17 02:00 |  | 1d |  | start no earlier than 2010-11-17 00:00 | Juan Ghiringhelli; Javier Madeiro; Marcos Sander | 6h |  |
| 310 | 4.1.1.3.2 | Preparar presentación al director |  | 2h | 2010-11-18 00:00 | 2010-11-18 02:00 |  | 0d |  | start no earlier than 2010-11-18 00:00 | Juan Ghiringhelli | 2h |  |
| 311 | 4.1.1.3.3 | Preparar presentación final del proyecto |  | 4h | 2010-11-16 00:00 | 2010-11-16 04:00 |  | 1.92d |  | start no earlier than 2010-11-16 00:00 | Juan Ghiringhelli | 4h |  |
| 312 | 4.1.1.4 | **Gestión de la Calidad** |  | 0.25d? | 2010-11-07 04:00 | 2010-11-07 10:00 |  | 10.67d |  |  |  | 12h |  |
| 313 | 4.1.1.4.1 | Revisión de Documentos |  | 6h? | 2010-11-07 04:00 | 2010-11-07 10:00 |  | 10.67d |  | start no earlier than 2010-10-17 01:00 | Alejandro García; Javier Madeiro | 12h | 6 horas? |
| 314 | 4.1.1.5 | **Gestión de la Configuración** |  | 3d? | 2010-11-10 00:00 | 2010-11-13 00:00 |  | 5.08d |  |  |  |  |  |
| 315 | 4.1.1.5.1 | Escribir las notas de la versión |  | 1d | 2010-11-10 00:00 | 2010-11-11 00:00 |  | 7.08d |  | start no earlier than 2010-11-10 00:00 |  |  | 0,5 horas |
| 316 | 4.1.1.5.2 | Realizar informe final de SCM |  | 3d? | 2010-11-10 00:00 | 2010-11-13 00:00 |  | 5.08d |  | finish no earlier than 2010-11-13 00:00 |  |  | 5 horas |
| 317 | 4.1.1.6 | **Entregables** |  | 3.48d | 2010-11-10 00:00 | 2010-11-13 11:30 |  | 4.6d |  |  |  | 54h |  |
| 318 | 4.1.1.6.1 | Informe final de verificación |  | 2h | 2010-11-13 00:00 | 2010-11-13 02:00 |  | 4.94d | 0.33d | start no earlier than 2010-11-13 00:00 | Alejandro García | 2h | 2 horas |
| 319 | 4.1.1.6.2 | Reporte de pruebas |  | 4h | 2010-11-13 00:00 | 2010-11-13 04:00 |  | 4.85d | 0.25d | start no earlier than 2010-11-13 00:00 | Alejandro García | 4h | 4 horas |
| 320 | 4.1.1.6.3 | Reporte Final de Pruebas de Aceptación |  | 4h | 2010-11-13 00:00 | 2010-11-13 04:00 |  | 4.85d | 0.25d | start no earlier than 2010-11-13 00:00 | Alejandro García | 4h | 4 horas |
| 321 | 4.1.1.6.4 | Informe final de calidad |  | 8h | 2010-11-13 00:00 | 2010-11-13 08:00 |  | 4.69d | 0.08d | start no earlier than 2010-11-13 00:00 | Javier Madeiro | 8h | 8 horas |
| 322 | 4.1.1.6.5 | Informe de revisión de SQA |  | 2h | 2010-11-13 00:00 | 2010-11-13 02:00 |  | 4.94d | 0.33d | start no earlier than 2010-11-13 00:00 | Javier Madeiro | 2h | 2 horas |
| 323 | 4.1.1.6.6 | Materiales para soporte al usuario |  | 2h | 2010-11-13 00:00 | 2010-11-13 02:00 |  | 4.94d | 0.33d | start no earlier than 2010-11-13 00:00 | José Cordero | 2h | 2 horas |
| 324 | 4.1.1.6.7 | Acta de reunión de equipo |  | 1h | 2010-11-13 00:00 | 2010-11-13 01:00 |  | 4.98d | 0.38d | start no earlier than 2010-11-13 00:00 | Juan Ghiringhelli | 1h | 1 hora |
| 325 | 4.1.1.6.8 | Informe de conclusiones de la fase |  | 1h | 2010-11-13 00:00 | 2010-11-13 01:00 |  | 4.98d | 0.38d | start no earlier than 2010-11-13 00:00 | Juan Ghiringhelli | 1h | 1 hora |
| 326 | 4.1.1.6.9 | Informe de situación de proyecto |  | 1h | 2010-11-13 00:00 | 2010-11-13 01:00 |  | 4.98d | 0.38d | start no earlier than 2010-11-13 00:00 | Juan Ghiringhelli | 1h | 1 hora |
| 327 | 4.1.1.6.10 | Informe final de proyecto |  | 4h | 2010-11-13 00:00 | 2010-11-13 04:00 |  | 4.85d | 0.25d | start no earlier than 2010-11-13 00:00 | Juan Ghiringhelli | 4h | 4 horas |
| 328 | 4.1.1.6.11 | Lecciones Aprendidas |  | 0.5h | 2010-11-13 00:00 | 2010-11-13 00:30 |  | 5d | 0.4d | start no earlier than 2010-11-13 00:00 | Juan Ghiringhelli | 0.5h | 0,5 horas |
| 329 | 4.1.1.6.12 | Presentación de cierre de proyecto |  | 4h | 2010-11-13 00:00 | 2010-11-13 04:00 |  | 4.85d | 0.25d | start no earlier than 2010-11-13 00:00 | Juan Ghiringhelli | 4h | 4 horas |
| 330 | 4.1.1.6.13 | Registro de actividades |  | 1h | 2010-11-13 00:00 | 2010-11-13 01:00 |  | 4.98d | 0.38d | start no earlier than 2010-11-13 00:00 | Juan Ghiringhelli | 1h | 1 hora |
| 331 | 4.1.1.6.14 | Encuesta de satisfacción del cliente |  | 2h | 2010-11-10 00:00 | 2010-11-10 02:00 |  | 7.94d | 3.33d | start no earlier than 2010-11-10 00:00 | Ignacio Infante; Juan Ghiringhelli | 4h | 2 horas |
| 332 | 4.1.1.6.15 | Documentación técnica |  | 1h | 2010-11-13 00:00 | 2010-11-13 01:00 |  | 4.98d | 0.38d | start no earlier than 2010-11-13 00:00 | Marcos Sander | 1h | 1 hora |
| 333 | 4.1.1.6.16 | Versión alfa del producto | milestone | 0h | 2010-11-13 00:00 | 2010-11-13 00:00 |  | 5.02d | 0.42d | start no earlier than 2010-11-13 00:00 | Marcos Sander; Vicente Acosta |  | 0 horas |
| 334 | 4.1.1.6.17 | Informe final de configuración |  | 10h | 2010-11-13 00:00 | 2010-11-13 10:00 |  | 4.6d | 0d | start no earlier than 2010-11-13 00:00 | Vicente Acosta | 10h | 10 horas |
| 335 | 4.1.1.6.18 | Notas de la versión |  | 3h | 2010-11-13 00:00 | 2010-11-13 03:00 |  | 4.9d | 0.29d | start no earlier than 2010-11-13 00:00 | Vicente Acosta | 3h | 3 horas |
| 336 | 4.1.1.6.19 | Entrega semanal de SQA |  | 1.5h | 2010-11-13 10:00 | 2010-11-13 11:30 | 318, 319, 320, 321, 322, 323, 324, 325, 326, 327, 328, 329, 330, 331, 332, 333, 334, 335 | 4.6d |  |  | Javier Madeiro | 1.5h | 1,5 horas |
| 337 | 4.1.1.7 | Presentación al cliente | milestone | 0h | 2010-11-08 00:00 | 2010-11-08 00:00 |  | 10.08d |  | start no earlier than 2010-11-08 00:00 | Juan Ghiringhelli |  | 0 horas |
| 338 | 4.1.1.8 | Buffer de error |  | 1h? | 2010-11-14 00:00 | 2010-11-14 01:00 |  | 4.04d |  | start no earlier than 2010-11-14 00:00 | Alejandro García; Diego Ricca; Federico Andrade; Federico Trinidad; Ignacio Infante; Javier Madeiro; José Cordero; Juan Ghiringhelli; Leticia Vilariño; Marcos Sander; Martín Taruselli; Vicente Acosta | 12h | 1 hora? |
